# 项目计划

Schedule from MS Project, 2010-08-26 to 2011-03-15, costs in ¥, A marks actual dates.
join-cheer

## Calendars

- 标准: Mon-Fri 08:00-12:00, 13:00-17:00; Sat-Sun off. Exceptions (off unless hours are given): 2010-09-25 to 2010-09-26 08:00-12:00, 13:00-17:00, 2010-10-10 08:00-12:00, 13:00-17:00.

## Resources

| Resource | Group | Rate |
| --- | --- | --- |
| 别泳 | CI产品事业部/CI研发一部 | 50 |
| 郭文辉 | CI产品事业部\CI研发一部 | 50 |
| 侯秀峰 | CI产品事业部/CI研发一部 | 87.5 |
| 靳涛 | CI产品事业部\CI研发一部 | 50 |
| 梁涛 | CI产品事业部\CI研发一部 | 87.5 |
| 廖永乐 | CI产品事业部\CI研发一部 | 137.5 |
| 王伟 | CI产品事业部\CI研发一部 | 50 |
| 郭铠铭 | 软件研究院/应用转化部 | 50 |
| 闵杨 | 软件研究院\应用转化部 | 50 |
| 王琛 | 软件研究院\应用转化部 | 50 |
| 王淇 | 软件研究院\应用转化部 | 87.5 |
| 王酌 | 软件研究院\应用转化部 | 50 |
| 吴佳龙 | 软件研究院\应用转化部 | 50 |
| 刘殊佳 | 测试中心\测试一部 | 50 |
| 石然 | 测试中心\测试一部 | 87.5 |
| 史岩 | 测试中心\测试三部 | 50 |
| 曾理志 | CI产品事业部\CI研发二部 | 50 |
| 胡超 | CI产品事业部\CI研发二部 | 50 |
| 赵园 | CI产品事业部\CI研发二部 | 50 |
| 季伟滨 | CI产品事业部\CI研发三部 | 50 |
| 贾朝阳 | CI产品事业部\CI研发一部 | 87.5 |
| 项目组 |  |  |
| 测试组 |  |  |
| 开发组 |  |  |
| 评审组 |  |  |
| 邹鸿雁 | 研发中心\美工部 | 87.5 |
| 张晓伟 | 测试中心\测试一部 | 50 |
| 邵婧 | CI产品事业部 | 50 |
| 黄敬洲 | 测试中心\系统测试部 | 50 |
| 何建芳 | CI产品事业部\CI研发二部 | 50 |
| 杨端学 | 软件研究院\应用转化部 | 87.5 |
| 于占国 |  | 137.5 |
| 张磊 |  | 137.5 |
| 刘琦 |  | 50 |
| 黄碧辉 |  | 50 |
| 刘盛田 |  | 50 |
| 王赟 |  | 137.5 |
| 董仕琪 |  | 50 |

## Schedule

| ID | WBS | Task | Duration | Start | Finish | Complete | Constraint | Resources | Work | Actual work | Cost | Actual cost |
| --- | --- | --- | --- | --- | --- | --- | --- | --- | --- | --- | --- | --- |
| 1 | 1 | **需求阶段** | 50d? | 2010-08-26 A | 2010-10-31 A | 100% |  |  | 6716.53h | 6716.53h | 446,143.33 | 446,143.33 |
| 2 | 1.1 | **内容介绍** | 9d? | 2010-08-26 A | 2010-09-07 A | 100% |  |  | 1200h | 1200h | 78,000 | 78,000 |
| 3 | 1.1.1 | 单位介绍 | 1d? | 2010-09-01 A | 2010-09-01 A | 100% | start no earlier than 2010-09-01 | 梁涛 [20%] | 8h | 8h | 700 | 700 |
| 4 | 1.1.2 | 查询介绍 | 1d? | 2010-09-02 A | 2010-09-02 A | 100% | start no earlier than 2010-09-02 | 胡超 [20%] | 8h | 8h | 400 | 400 |
| 5 | 1.1.3 | 图表介绍 | 1d? | 2010-09-03 A | 2010-09-03 A | 100% | start no earlier than 2010-09-03 |  |  |  |  |  |
| 6 | 1.1.4 | 相关功能UI方面介绍 | 1d? | 2010-09-03 A | 2010-09-03 A | 100% | start no earlier than 2010-09-03 | 曾理志 [20%] | 8h | 8h | 400 | 400 |
| 7 | 1.1.5 | 参数制作介绍 | 1d? | 2010-09-06 A | 2010-09-06 A | 100% | start no earlier than 2010-09-06 | 贾朝阳 [20%]; 石然 | 16h | 16h | 1,400 | 1,400 |
| 8 | 1.1.6 | BAP参数存储结构和程序结构介绍 | 1d? | 2010-09-06 A | 2010-09-06 A | 100% | start no earlier than 2010-09-06 | 吴佳龙 | 8h | 8h | 400 | 400 |
| 9 | 1.1.7 | 场景和方案编写介绍 | 1d | 2010-09-07 A | 2010-09-07 A | 100% | start no earlier than 2010-09-07 |  |  |  |  |  |
| 10 | 1.1.8 | 需求了解 | 9d? | 2010-08-26 A | 2010-09-07 A | 100% | start no earlier than 2010-08-26 | 贾朝阳; 侯秀峰; 梁涛; 王伟; 郭文辉; 别泳; 胡超; 赵园; 曾理志; 季伟滨; 王淇; 郭铠铭; 王琛; 吴佳龙; 王酌; 廖永乐 | 1152h | 1152h | 74,700 | 74,700 |
| 11 | 1.2 | **方案整理** | 19d? | 2010-09-08 A | 2010-09-30 A | 100% |  |  | 2620h | 2620h | 176,300 | 176,300 |
| 12 | 1.2.1 | **场景整理** | 16d? | 2010-09-08 A | 2010-09-27 A | 100% |  |  | 1076h | 1076h | 77,300 | 77,300 |
| 13 | 1.2.1.1 | 经典表样分析 | 1d? | 2010-09-27 A | 2010-09-27 A | 100% | start no earlier than 2010-09-27 | 贾朝阳 [10%] | 8h | 8h | 700 | 700 |
| 14 | 1.2.1.2 | 参数制作模式 | 8d? | 2010-09-08 A | 2010-09-17 A | 100% | finish no earlier than 2010-09-17 | 贾朝阳; 廖永乐; 侯秀峰; 赵园; 别泳; 石然 | 384h | 384h | 32,000 | 32,000 |
| 15 | 1.2.1.3 | 数据录入功能列表 | 8d? | 2010-09-08 A | 2010-09-17 A | 100% | finish no earlier than 2010-09-17 | 曾理志; 季伟滨 | 128h | 128h | 6,400 | 6,400 |
| 16 | 1.2.1.4 | 参数应用场景 | 8d? | 2010-09-08 A | 2010-09-17 A | 100% | finish no earlier than 2010-09-17 | 贾朝阳; 廖永乐 | 128h | 128h | 14,400 | 14,400 |
| 17 | 1.2.1.5 | 数据组织场景 | 8d? | 2010-09-08 A | 2010-09-17 A | 100% | finish no earlier than 2010-09-17 | 梁涛 | 64h | 64h | 5,600 | 5,600 |
| 18 | 1.2.1.6 | 单位场景 | 8d? | 2010-09-08 A | 2010-09-17 A | 100% | finish no earlier than 2010-09-17 | 闵杨; 王酌 | 60h | 60h | 3,000 | 3,000 |
| 19 | 1.2.1.7 | 查询场景 | 8d? | 2010-09-08 A | 2010-09-17 A | 100% | finish no earlier than 2010-09-17 | 王淇; 郭铠铭 | 128h | 128h | 8,800 | 8,800 |
| 20 | 1.2.1.8 | 图表模板场景 | 8d? | 2010-09-08 A | 2010-09-17 A | 100% | finish no earlier than 2010-10-20 | 胡超 | 64h | 64h | 3,200 | 3,200 |
| 21 | 1.2.1.9 | 上报流程场景 | 8d? | 2010-09-08 A | 2010-09-17 A | 100% | finish no earlier than 2010-09-17 | 郭文辉 | 64h | 64h | 3,200 | 3,200 |
| 22 | 1.2.1.10 | 场景第一次评审 | 1d? | 2010-09-09 A | 2010-09-09 A | 100% | finish no earlier than 2010-09-09 | 项目组; 评审组 | 16h | 16h |  |  |
| 23 | 1.2.1.11 | 场景第二次评审 | 1d? | 2010-09-14 A | 2010-09-14 A | 100% | start no earlier than 2010-09-14 | 评审组; 项目组 | 16h | 16h |  |  |
| 24 | 1.2.1.12 | 场景第三次评审 | 1d? | 2010-09-17 A | 2010-09-17 A | 100% | start no earlier than 2010-09-17 | 评审组; 项目组 | 16h | 16h |  |  |

| ID | WBS | Task | Duration | Start | Finish | Complete | Constraint | Resources | Work | Actual work | Cost | Actual cost |
| --- | --- | --- | --- | --- | --- | --- | --- | --- | --- | --- | --- | --- |
| 25 | 1.2.2 | **方案编写** | 11d? | 2010-09-20 A | 2010-09-30 A | 100% |  |  | 1544h | 1544h | 99,000 | 99,000 |
| 26 | 1.2.2.1 | 方案编写 | 11d? | 2010-09-20 A | 2010-09-30 A | 100% | start no earlier than 2010-09-20 | 贾朝阳; 侯秀峰; 梁涛; 王伟; 郭文辉; 别泳; 胡超; 赵园; 曾理志; 季伟滨; 王淇; 郭铠铭; 王琛; 吴佳龙; 王酌; 石然; 廖永乐 | 1496h | 1496h | 99,000 | 99,000 |
| 27 | 1.2.2.2 | 方案第一次评审 | 1d? | 2010-09-26 A | 2010-09-26 A | 100% | start no earlier than 2010-09-26 | 评审组; 项目组 | 16h | 16h |  |  |
| 28 | 1.2.2.3 | 方案第二次评审 | 1d? | 2010-09-28 A | 2010-09-28 A | 100% | start no earlier than 2010-09-28 | 评审组; 项目组 | 16h | 16h |  |  |
| 29 | 1.2.2.4 | 方案第三次评审 | 1d? | 2010-09-30 A | 2010-09-30 A | 100% | start no earlier than 2010-09-30 | 评审组; 项目组 | 16h | 16h |  |  |
| 30 | 1.3 | **需求规格** | 36d? | 2010-09-15 A | 2010-10-31 A | 100% |  |  | 2872.53h | 2872.53h | 189,943.33 | 189,943.33 |
| 31 | 1.3.1 | 收集需求讨论 | 1d? | 2010-09-15 A | 2010-09-15 A | 100% | start no earlier than 2010-09-27 | 项目组; 评审组 | 16h | 16h |  |  |
| 32 | 1.3.2 | 数据录入 | 22.33d? | 2010-09-30 A | 2010-10-31 A | 100% | finish no earlier than 2010-10-28 | 曾理志; 季伟滨; 邹鸿雁; 廖永乐 [50%] | 625.33h | 625.33h | 45,783.33 | 45,783.33 |
| 33 | 1.3.3 | 参数制作 | 17d? | 2010-10-08 A | 2010-10-31 A | 100% | start no earlier than 2010-10-08 | 别泳; 侯秀峰; 赵园; 邹鸿雁; 廖永乐; 贾朝阳; 刘殊佳 | 952h | 952h | 74,800 | 74,800 |
| 34 | 1.3.4 | 上报流程 | 17d? | 2010-10-08 A | 2010-10-31 A | 100% | finish no earlier than 2010-10-28 | 郭文辉; 张晓伟 | 272h | 272h | 13,600 | 13,600 |
| 35 | 1.3.5 | 查询 | 17d? | 2010-10-08 A | 2010-10-31 A | 100% | start no earlier than 2010-10-08 | 王淇; 郭铠铭; 邹鸿雁; 史岩 | 544h | 544h | 37,400 | 37,400 |
| 36 | 1.3.6 | 单位权限 | 17d? | 2010-10-08 A | 2010-10-31 A | 100% | start no earlier than 2010-10-08 | 闵杨 [50%]; 王酌 | 204h | 204h | 10,200 | 10,200 |
| 37 | 1.3.7 | 图表 | 17d? | 2010-10-08 A | 2010-10-31 A | 100% | finish no earlier than 2010-10-31 | 胡超 | 136h | 136h | 6,800 | 6,800 |
| 38 | 1.3.8 | 汇总 | 17d? | 2010-10-08 A | 2010-10-31 A | 100% | finish no earlier than 2010-10-31 | 靳涛 [20%] | 27.2h | 27.2h | 1,360 | 1,360 |
| 39 | 1.3.9 | 需求规格第一次评审 | 1d? | 2010-09-26 A | 2010-09-26 A | 100% | start no earlier than 2010-09-26 | 评审组; 项目组 | 16h | 16h |  |  |
| 40 | 1.3.10 | 需求规格第二次评审 | 1d? | 2010-09-30 A | 2010-09-30 A | 100% | start no earlier than 2010-09-30 | 评审组; 项目组 | 16h | 16h |  |  |
| 41 | 1.3.11 | 需求规格第三次评审 | 1d? | 2010-10-11 A | 2010-10-11 A | 100% | start no earlier than 2010-10-11 | 评审组; 项目组 | 16h | 16h |  |  |
| 42 | 1.3.12 | 需求规格第四次评审 | 1d? | 2010-10-15 A | 2010-10-15 A | 100% | start no earlier than 2010-10-15 | 评审组; 项目组 | 16h | 16h |  |  |
| 43 | 1.3.13 | 需求规格第五次评审 | 1d? | 2010-10-21 A | 2010-10-21 A | 100% | start no earlier than 2010-10-21 | 评审组; 项目组 | 16h | 16h |  |  |
| 44 | 1.3.14 | 需求规格第五次评审 | 1d? | 2010-10-28 A | 2010-10-28 A | 100% | start no earlier than 2010-10-28 | 评审组; 项目组 | 16h | 16h |  |  |
| 45 | 1.4 | 测试计划 | 1d? | 2010-10-22 A | 2010-10-22 A | 100% | start no earlier than 2010-10-22 | 刘殊佳 | 8h | 8h | 400 | 400 |
| 46 | 1.5 | **其他** | 1d? | 2010-10-29 A | 2010-10-29 A | 100% |  |  | 16h | 16h | 1,500 | 1,500 |
| 47 | 1.5.1 | 阶段总结 | 1d? | 2010-10-29 A | 2010-10-29 A | 100% | start no earlier than 2010-10-29 | 廖永乐 | 8h | 8h | 1,100 | 1,100 |
| 48 | 1.5.2 | 建立需求基线 | 1d? | 2010-10-29 A | 2010-10-29 A | 100% | start no earlier than 2010-10-29 | 邵婧 | 8h | 8h | 400 | 400 |

Notes:
- 39: 数据录入第一次 / 查询第一次 / 图表第一次 / 参数制作第一次
- 40: 数据录入 / 查询第 / 图表第 / 参数制作 / 上报流程 / 单位
- 41: 全部
- 42: 全部
- 43: 全部
- 44: 全部

| ID | WBS | Task | Duration | Start | Finish | Predecessors | Complete | Remaining | Total slack | Constraint | Resources | Work | Actual work | Cost | Actual cost |
| --- | --- | --- | --- | --- | --- | --- | --- | --- | --- | --- | --- | --- | --- | --- | --- |
| 49 | 2 | **设计开发阶段** | 66d? | 2010-11-01 A | 2011-01-31 |  | 2% | 64.35d? | 31d |  |  | 9554.4h | 1368h | 619,801.18 | 84,441.18 |
| 50 | 2.1 | 设计 | 9.71d? | 2010-11-02 A | 2010-11-15 A |  | 100% |  |  | finish no earlier than 2010-11-15 | 贾朝阳; 侯秀峰; 梁涛; 王伟; 郭文辉; 别泳; 胡超; 赵园; 曾理志; 季伟滨; 王淇; 郭铠铭; 王琛; 吴佳龙; 王酌; 廖永乐; 何建芳 [80%]; 靳涛 [20%] | 1320h | 1320h | 84,441.18 | 84,441.18 |
| 51 | 2.2 | 设计第一次评审 | 1d? | 2010-11-05 A | 2010-11-05 A |  | 100% |  |  | start no earlier than 2010-11-05 | 评审组; 开发组 | 16h | 16h |  |  |
| 52 | 2.3 | 设计第二次评审 | 1d? | 2010-11-12 A | 2010-11-12 A |  | 100% |  |  | start no earlier than 2010-11-12 | 评审组; 开发组 | 16h | 16h |  |  |
| 53 | 2.4 | 参数制作 | 56d? | 2010-11-15 | 2011-01-31 |  |  |  | 3d | finish no earlier than 2011-01-31 | 贾朝阳; 别泳; 侯秀峰; 赵园; 廖永乐 [50%] | 2016h |  | 154,000 |  |
| 54 | 2.5 | 数据录入 | 56d? | 2010-11-15 | 2011-01-31 |  |  |  | 3d | finish no earlier than 2011-01-31 | 曾理志; 赵园; 吴佳龙 | 1344h |  | 67,200 |  |
| 55 | 2.6 | 上报流程 | 56d? | 2010-11-15 | 2011-01-31 |  |  |  | 3d | finish no earlier than 2011-01-31 | 郭文辉 | 448h |  | 22,400 |  |
| 56 | 2.7 | 查询 | 56d? | 2010-11-15 | 2011-01-31 |  |  |  | 3d | finish no earlier than 2011-01-31 | 王淇; 郭铠铭 | 896h |  | 61,600 |  |
| 57 | 2.8 | 单位权限 | 35d? | 2010-12-14 | 2011-01-31 |  |  |  | 3d | finish no earlier than 2011-01-31 | 王酌; 闵杨 [50%] | 420h |  | 21,000 |  |
| 58 | 2.9 | 图表 | 56d? | 2010-11-15 | 2011-01-31 |  |  |  | 3d | finish no earlier than 2011-01-31 | 胡超; 何建芳 | 896h |  | 44,800 |  |
| 59 | 2.10 | 数据存储层 | 56d? | 2010-11-15 | 2011-01-31 |  |  |  | 3d | finish no earlier than 2011-01-31 | 梁涛; 王琛; 王伟; 廖永乐 [50%]; 杨端学 | 1232h |  | 105,000 |  |
| 60 | 2.11 | 汇总 | 56d? | 2010-11-15 | 2011-01-31 |  |  |  | 3d | finish no earlier than 2011-01-31 | 靳涛 | 448h |  | 22,400 |  |
| 61 | 2.12 | 界面规范等 | 66d? | 2010-11-01 | 2011-01-31 |  |  |  | 3d | finish no earlier than 2011-01-31 | 邹鸿雁 [80%] | 422.4h |  | 36,960 |  |
| 62 | 2.13 | 代码评审 | 1d? | 2010-12-15 | 2010-12-15 |  |  |  | 36d | start no earlier than 2010-12-15 | 评审组; 开发组 | 16h |  |  |  |
| 63 | 2.14 | 功能第一次评审(参数部分) | 1d? | 2011-01-06 A | 2011-01-06 A |  | 100% |  |  | start no earlier than 2011-01-06 | 评审组; 项目组 | 16h | 16h |  |  |
| 64 | 2.15 | 功能第二次评审(参数、数据录入) | 1d? | 2011-01-12 | 2011-01-12 |  |  |  | 44d | start no earlier than 2011-01-12 | 评审组; 项目组 | 16h |  |  |  |
| 65 | 2.16 | 功能第三次评审(全部) | 1d? | 2011-01-17 | 2011-01-17 |  |  |  | 41d | finish no earlier than 2011-01-17 | 评审组; 项目组 | 16h |  |  |  |
| 66 | 2.17 | 功能第四次评审（全部） | 1d? | 2011-01-26 | 2011-01-26 |  |  |  | 34d | start no earlier than 2011-01-26 | 评审组; 项目组 | 16h |  |  |  |
| 67 | 3 | **项目发版** | 95.36d? | 2010-11-02 A | 2011-03-15 |  | 30% | 66.72d? | 0d |  |  | 11584h | 1908h | 699,529.09 | 113,179.09 |
| 68 | 3.1 | 测试设计 | 43.36d? | 2010-11-02 A | 2010-12-31 A |  | 100% |  |  | finish no earlier than 2010-12-31 | 刘殊佳; 史岩; 张晓伟; 刘盛田 [50%]; 黄碧辉 [80%]; 刘琦 [50%]; 王赟 [50%]; 石然 [20%] | 1908h | 1908h | 113,179.09 | 113,179.09 |
| 69 | 3.2 | 测试 | 49d? | 2011-01-03 | 2011-03-10 |  |  |  | 0d | finish no earlier than 2011-03-10 | 刘殊佳; 史岩; 张晓伟; 刘盛田; 黄碧辉; 刘琦 | 2352h |  | 117,600 |  |
| 70 | 3.3 | 修改bug | 49d? | 2011-01-03 | 2011-03-10 |  |  |  | 0d | finish no earlier than 2011-03-10 | 贾朝阳; 侯秀峰; 梁涛; 王伟; 郭文辉; 别泳; 胡超; 赵园; 曾理志; 季伟滨; 王淇; 郭铠铭; 王琛; 吴佳龙; 王酌; 廖永乐; 杨端学 [50%]; 靳涛; 何建芳 | 7252h |  | 463,050 |  |
| 71 | 3.4 | 发版 | 3d? | 2011-03-11 | 2011-03-15 | 70, 69 |  |  | 0d | finish no earlier than 2011-03-11 | 廖永乐; 刘殊佳; 邵婧 | 72h |  | 5,700 |  |
| 72 | 4 | **移动项目** | 114d? | 2010-08-30 | 2011-01-31 |  |  |  | 3d |  |  | 2371.2h |  | 190,380 |  |
| 73 | 4.1 | 移动研发 | 114d? | 2010-08-30 | 2011-01-31 |  |  |  | 3d | finish no earlier than 2011-01-31 | 张磊 [20%]; 吴佳龙 [40%]; 王伟 [40%]; 王琛 [50%] | 1368h |  | 84,360 |  |
| 74 | 4.2 | 移动测试 | 114d? | 2010-08-30 | 2011-01-31 |  |  |  | 3d | start no earlier than 2010-08-30 | 黄敬洲 [20%] | 182.4h |  | 9,120 |  |
| 75 | 4.3 | 移动实施 | 114d? | 2010-08-30 | 2011-01-31 |  |  |  | 3d | start no earlier than 2010-08-30 | 于占国 [70%]; 董仕琪 [20%] | 820.8h |  | 96,900 |  |

Notes:
- 63: 这次属于介绍性质，内部了解
